# 30005 Syncrude - Fort McMurray - 2025 Equipment Strategy Development

Schedule from MS Project, 2023-06-12 to 2026-06-18, status date 2026-01-11, costs in $, A marks actual dates.

## Calendars

- Standard: Mon-Fri 08:00-12:00, 13:00-17:00; Sat-Sun off.

## Resources

| Resource | Group | Rate |
| --- | --- | --- |
| Reliability Data Analyst |  | 50.56 |
| Manager (Services) | 1111 Services | 97.95 |
| Lead (Services) | 1111 Services | 76.17 |
| TS |  | 70.12 |
| Reliability Data Analyst I |  | 56.01 |
| Partner |  | 123.41 |
| Senior Project Manager |  | 126.19 |
| Senior Engineer |  | 77.35 |
| Project Controls Lead |  | 59.34 |
| Reliability Solutions Engineer |  | 60.97 |
| Reliability Analyst |  | 61.74 |
| Technical Specialist | 1111 Services | 70.12 |
| Engineering Specialist | 1111 Services | 57.94 |
| Project Controls Analyst - India | 1111 Services | 12.16 |

## Schedule

| ID | WBS | Task | Duration | Start | Finish | Complete | Remaining | Baseline start | Baseline finish | Baseline duration | Total slack | Free slack | Constraint | Resources | Work | Actual work | Cost | Baseline cost | Actual cost | Unit | Project ID | Phase |
| --- | --- | --- | --- | --- | --- | --- | --- | --- | --- | --- | --- | --- | --- | --- | --- | --- | --- | --- | --- | --- | --- | --- |
| 1 | 1 | **30005 - 2025 Syncrude ES Development** | 788.97d? | 2023-06-12 A | 2026-06-18 | 87% | 106.13d? | 2025-02-05 | 2025-12-31 | 236d | 0d |  |  |  | 4860.43h | 4334.24h | 345,878.36 | 260,419.14 | 279,940.42 | NA | 30005 |  |
| 2 | 1.1 | **Project Execution** | 280.85d | 2025-03-10 A | 2026-04-06 | 87% | 37.77d | 2025-02-05 | 2025-12-31 | 236d | 53.12d |  |  |  | 3068.43h | 2711.74h | 163,820.15 | 202,000.61 | 142,543.53 | NA | 30005 |  |
| 3 | 1.1.1 | **Asset Strategy Development** | 265.85d | 2025-03-31 A | 2026-04-06 | 86% | 37.03d | 2025-02-05 | 2025-12-31 | 236d | 53.12d |  |  |  | 2532.43h | 2276.74h | 135,294.59 | 130,036.95 | 120,058.01 | NA | 30005 | Asset Strategy Development |
| 4 | 1.1.1.1 | ASDF.BTR | 77.5d | 2025-03-31 A | 2026-01-23 | 88% | 9.25d | 2025-02-05 | 2026-01-08 | 236d | 104.72d |  | start no earlier than 2025-02-05 | Reliability Data Analyst I; TS [50%]; Reliability Data Analyst | 155.5h | 118.5h | 10,815.62 | 5,869 | 8,221.2 | NA | 30005 | Asset Strategy Development |
| 5 | 1.1.1.2 | ASDF.CER | 167.74d | 2025-03-31 A | 2026-01-21 | 95% | 7.74d | 2025-02-05 | 2025-12-31 | 236d | 106.22d |  |  | Reliability Data Analyst I; TS [50%]; Reliability Data Analyst [120%]; Engineering Specialist | 288h | 251h | 16,822.73 | 21,273.43 | 14,867.84 | NA | 30005 | Asset Strategy Development |
| 6 | 1.1.1.3 | ASDF.HX | 244.85d | 2025-04-07 A | 2026-04-06 | 75% | 60.85d | 2025-02-05 | 2025-12-31 | 236d | 53.12d |  |  | Reliability Data Analyst I [45%]; TS [10%]; Reliability Data Analyst [45%]; Reliability Solutions Engineer | 1028.5h | 922.5h | 52,999.19 | 33,029.89 | 46,693.65 | NA | 30005 | Asset Strategy Development |
| 7 | 1.1.1.4 | ASDF.PMT | 125.1d | 2025-04-21 A | 2026-01-19 | 96% | 5.23d | 2025-02-05 | 2025-12-31 | 236d | 108.74d |  |  | Reliability Data Analyst I [50%]; TS [50%]; Reliability Data Analyst; Engineering Specialist; Reliability Solutions Engineer | 135.94h | 115.25h | 7,472.25 | 23,270.63 | 6,313.4 | NA | 30005 | Asset Strategy Development |
| 8 | 1.1.1.5 | ASDF.PVSL | 123.02d | 2025-03-31 A | 2026-01-15 | 98% | 3.06d | 2025-02-05 | 2025-12-31 | 236d | 110.9d |  |  | Reliability Data Analyst I [45%]; TS [10%]; Reliability Data Analyst [45%] | 575.75h | 540.75h | 29,391.7 | 18,533.37 | 27,340.32 | NA | 30005 | Asset Strategy Development |
| 9 | 1.1.1.6 | ASDF.TK | 49d | 2025-05-05 A | 2026-01-05 A | 100% |  | 2025-02-05 | 2025-12-31 | 236d |  |  |  | Reliability Data Analyst I [67%]; TS [33%]; Reliability Data Analyst | 61h | 61h | 3,084.16 | 9,952.26 | 3,084.16 | NA | 30005 | Asset Strategy Development |
| 10 | 1.1.1.7 | ASDF.MISC | 99d | 2025-08-04 A | 2026-03-04 | 62% | 38d | 2025-02-05 | 2025-12-31 | 236d | -45d | 0d | finish no later than 2025-12-31 | Reliability Data Analyst I [45%]; TS [10%]; Reliability Data Analyst [45%] | 274.75h | 254.75h | 14,051.67 | 7,671.16 | 12,880.16 | NA | 30005 | Asset Strategy Development |
| 11 | 1.1.1.8 | ASDF.TRAIN | 5d | 2025-09-29 A | 2025-12-01 A | 100% |  | 2025-02-05 | 2025-12-31 | 236d |  |  | finish no later than 2025-12-31 | Reliability Data Analyst I [45%]; TS [10%]; Reliability Data Analyst [45%] | 13h | 13h | 657.28 | 10,437.2 | 657.28 | NA | 30005 | Asset Strategy Development |
| 12 | 1.1.2 | **Document Data Gathering** | 224.86d | 2025-03-10 A | 2026-01-16 | 95% | 10.24d | 2025-02-05 | 2025-12-31 | 236d | 109.11d |  |  |  | 385h | 351h | 20,230.04 | 42,792.52 | 18,238.48 | NA | 30005 | Document Data Gathering |
| 13 | 1.1.2.1 | DDG.MISC | 58.91d | 2025-03-17 A | 2026-01-16 | 93% | 4.26d | 2025-02-05 | 2025-12-31 | 236d | -11.26d | 0d | finish no later than 2025-12-31 | Reliability Data Analyst I [45%]; TS [10%]; Reliability Data Analyst [50%] | 48.43h | 45.43h | 2,472.67 | 5,218.6 | 2,296.94 | NA | 30005 | Document Data Gathering |
| 14 | 1.1.2.2 | DDG.PVSL | 64.72d | 2025-03-31 A | 2026-01-16 | 92% | 4.86d | 2025-02-05 | 2025-12-31 | 236d | -11.86d | 0d | finish no later than 2025-12-31 | Reliability Data Analyst I [50%]; TS [30%]; Reliability Data Analyst [50%] | 96.5h | 90.5h | 4,927.13 | 12,524.64 | 4,575.68 | NA | 30005 | Document Data Gathering |
| 15 | 1.1.2.3 | DDG.TK | 20d | 2025-05-05 A | 2026-01-09 A | 100% |  | 2025-02-05 | 2025-12-31 | 236d |  |  | finish no later than 2025-12-31 | Reliability Data Analyst I; TS [50%]; Reliability Data Analyst | 18.77h | 18.77h | 949.01 | 6,262.32 | 949.01 | NA | 30005 | Document Data Gathering |
| 16 | 1.1.2.4 | DDG.HX | 136.63d | 2025-03-10 A | 2026-01-15 | 97% | 3.65d | 2025-02-05 | 2025-12-31 | 236d | 110.31d |  |  | Reliability Data Analyst I [70%]; TS [10%]; Reliability Data Analyst [50%]; Reliability Analyst | 221.3h | 196.3h | 11,881.23 | 18,786.96 | 10,416.85 | NA | 30005 | Document Data Gathering |
| 17 | 1.1.3 | **TSF Temporary Staffing** | 229.13d | 2025-04-21 A | 2026-03-06 | 77% | 53.55d | 2025-02-05 | 2025-12-31 | 236d | 0d |  |  |  | 151h | 84h | 8,295.52 | 29,171.14 | 4,247.04 | NA | 30005 | TSF Temporary Staffing |
| 18 | 1.1.3.1 | FLWUP - Follow Up Contacts | 54.13d | 2025-04-21 A | 2026-03-06 | 28% | 39.13d | 2025-02-05 | 2025-12-31 | 236d | -46.13d | 0d | finish no later than 2025-12-31 | Lead (Services) [20%]; Reliability Data Analyst; Reliability Data Analyst I | 20h | 4h | 1,158.15 | 9,529.08 | 202.24 | NA | 30005 | TSF Temporary Staffing |
| 19 | 1.1.3.2 | MEET - Schedule Meetings | 83.04d | 2025-06-09 A | 2026-01-16 | 94% | 4.68d | 2025-02-05 | 2025-12-31 | 236d | -11.68d | 0d | finish no later than 2025-12-31 | Lead (Services) [40%]; Reliability Data Analyst [30%]; Reliability Data Analyst I [30%] | 56.5h | 33.5h | 3,173.78 | 14,675.81 | 1,693.76 | NA | 30005 | TSF Temporary Staffing |
| 20 | 1.1.3.3 | SIGN - DocuSign | 70.95d | 2025-05-05 A | 2026-01-16 | 93% | 4.83d | 2025-02-05 | 2025-12-31 | 236d | -11.82d | 0d | finish no later than 2025-12-31 | Lead (Services) [60%]; Reliability Data Analyst [25%]; Reliability Data Analyst I [25%] | 74.5h | 46.5h | 3,963.58 | 4,966.26 | 2,351.04 | NA | 30005 | TSF Temporary Staffing |
| 21 | 1.2 | **MNC** | 368.97d | 2025-01-20 A | 2026-06-18 | 86% | 50.65d | 2025-02-05 | 2025-12-31 | 236d | 0d |  |  |  | 1735.5h | 1566h | 119,350.84 | 58,418.53 | 107,349.16 | NA | 30005 | Project Monitoring & Control |
| 22 | 1.2.1 | CSM - Client Status Meeting | 146.16d | 2025-03-31 A | 2026-01-14 | 98% | 2.85d | 2025-02-05 | 2025-12-31 | 236d | 111.12d |  | start no earlier than 2025-02-05 | Lead (Services) [40%]; TS [35%]; Reliability Data Analyst [10%]; Reliability Data Analyst I [10%]; Manager (Services) [5%]; Partner; Senior Engineer; Engineering Specialist | 90.5h | 80h | 5,869.78 | 5,807.89 | 5,098.01 | NA | 30005 | Project Monitoring & Control |
| 23 | 1.2.2 | General Project Support | 217.25d | 2025-03-24 A | 2026-02-24 | 86% | 31.25d | 2025-02-05 | 2025-12-31 | 236d | 82.72d |  |  | Lead (Services) [50%]; TS [15%]; Manager (Services) [35%]; Partner [2%]; Senior Project Manager [2%]; Reliability Data Analyst; Senior Engineer [2%] | 481.5h | 461.5h | 41,445.76 | 7,188.45 | 39,696.61 | NA | 30005 | Project Monitoring & Control |
| 24 | 1.2.3 | ITM - Internal Team Meetings | 316.97d | 2025-03-24 A | 2026-06-18 | 64% | 112.97d | 2025-02-05 | 2025-12-31 | 236d | 0d |  |  | Lead (Services) [25%]; Reliability Data Analyst I [30%]; TS [20%]; Reliability Data Analyst [30%]; Manager (Services) [5%]; Partner; Senior Project Manager; Engineering Specialist; Reliability Solutions Engineer | 484.75h | 424.75h | 31,532.19 | 20,133.12 | 26,800.15 | NA | 30005 | Project Monitoring & Control |
| 25 | 1.2.4 | PMM - Performance Management Meetings | 180d | 2025-01-20 A | 2026-01-15 | 98% | 4d | 2025-02-05 | 2025-12-31 | 236d | 109.97d |  |  | Lead (Services) [25%]; Reliability Data Analyst I [25%]; TS [12%]; Reliability Data Analyst [25%]; Manager (Services) [13%]; Partner | 70h | 62h | 3,648.48 | 7,702.53 | 3,243.99 | NA | 30005 | Project Monitoring & Control |
| 26 | 1.2.5 | PRI - Project Reporting & Invoicing | 53.88d | 2025-05-19 A | 2026-01-12 | 99% | 0.62d | 2025-02-05 | 2025-12-31 | 236d | 113.34d |  |  | Lead (Services) [70%]; Manager (Services) [30%]; Project Controls Lead; Reliability Data Analyst | 14h | 9h | 786.86 | 4,937.32 | 534.06 | NA | 30005 | Project Monitoring & Control |
| 27 | 1.2.6 | SCH - Project Schedule and Resource Management | 36.33d | 2025-02-05 A | 2026-01-14 | 93% | 2.43d | 2025-02-05 | 2025-12-31 | 236d | 111.53d |  |  | Lead (Services) [70%]; Manager (Services) [30%]; Partner; Reliability Data Analyst; Project Controls Analyst - India | 76.5h | 40.5h | 3,226.07 | 2,480.41 | 814.93 | NA | 30005 | Project Monitoring & Control |
| 28 | 1.2.7 | TEX - Technical Excellence | 171.94d | 2025-04-28 A | 2026-01-27 | 93% | 11.36d | 2025-02-05 | 2025-12-31 | 236d | 102.6d |  |  | Reliability Data Analyst [34%]; Reliability Data Analyst I [33%]; Lead (Services) [33%]; Reliability Solutions Engineer | 396.75h | 366.75h | 23,335.77 | 10,168.81 | 21,655.47 | NA | 30005 | Project Monitoring & Control |
| 29 | 1.2.8 | Travel | 44d | 2025-05-05 A | 2025-11-07 A | 100% |  |  |  |  |  |  |  | Partner; TS; Reliability Data Analyst; Senior Engineer; Engineering Specialist; Senior Project Manager | 86h | 86h | 7,711.05 |  | 7,711.05 | NA | 30005 | Travel |
| 30 | 1.2.9 | Internal Project Kick Off | 5d | 2025-03-31 A | 2025-04-04 A | 100% |  |  |  |  |  |  |  | Reliability Data Analyst | 1h | 1h | 50.56 |  | 50.56 | NA | 30005 | Project Planning |
| 31 | 1.2.10 | Non-Billable Time | 34d | 2025-06-02 A | 2025-12-05 A | 100% |  |  |  |  |  |  |  | Reliability Data Analyst | 34.5h | 34.5h | 1,744.32 |  | 1,744.32 | NA | 30005 | Non-Billable |

| ID | WBS | Task | Type | Duration | Start | Finish | Complete | Remaining | Total slack | Constraint | Resources | Work | Actual work | Cost | Actual cost | Unit | Phase | Project ID |
| --- | --- | --- | --- | --- | --- | --- | --- | --- | --- | --- | --- | --- | --- | --- | --- | --- | --- | --- |
| 32 | 1.3 | **OBT** |  | 146d? | 2025-06-23 A | 2026-01-12 | 95% | 7.3d? | 112.97d |  |  | 45h | 45h | 2,744.76 | 2,744.76 | NA | Onboarding | 30005 |
| 33 | 1.3.1 | Training |  | 1d? | 2026-01-12 | 2026-01-12 |  |  | 112.97d | start no earlier than 2026-01-11 |  |  |  |  |  | NA | Onboarding | 30005 |
| 34 | 1.3.2 | Onboarding |  | 19d | 2025-06-23 A | 2025-10-24 A | 100% |  |  |  | Reliability Data Analyst; Reliability Analyst | 45h | 45h | 2,744.76 | 2,744.76 | NA | Onboarding | 30005 |
| 35 | 1.4 | Expenses | manual | 1d | 2023-06-12 A | 2026-01-12 | 45% | 0.55d |  |  |  |  |  | 59,381.17 | 26,721.53 | NA | Expenses | 30005 |
| 36 | 1.5 | **Plan** |  | 80d | 2025-09-08 A | 2025-12-26 A | 100% |  |  |  |  | 11.5h | 11.5h | 581.44 | 581.44 | NA | Project Planning | 30005 |
| 37 | 1.5.1 | Project Task Procedure Development | manual | 15d | 2025-09-08 A | 2025-12-26 A | 100% |  |  |  | Reliability Data Analyst | 11.5h | 11.5h | 581.44 | 581.44 | NA | Project Planning | 30005 |
